# DOTPROJECTEAP_Guilherme_Fay

Schedule from MS Project, 2011-08-22 to 2011-12-19, costs in R$.
Microsoft

## Calendars

- Standard: Mon-Fri 08:00-12:00, 13:00-17:00; Sat-Sun off.

## Resources

| Resource | Group | Rate | Cost per use |
| --- | --- | --- | --- |
| -CAPITAL |  |  |  |
| Compra de computador |  | 1500 |  |
| Equipamento de rede |  | 200 |  |
| Servidor |  | 8000 |  |
| Licenças Office |  | 224.91 |  |
| Licença MS Project |  | 1848.15 |  |
| -CUSTEIO |  |  |  |
| Resma de papel |  | 12 |  |
| Eletricidade |  |  |  |
| Internet/Telefonia |  |  |  |
| Manutenção |  |  |  |
| Guilherme Fay | Funcionário | 50 |  |
| Jose Guimarães | Funcionário | 90 |  |
| Rafael Queiroz | Funcionário | 60 |  |
| GuilhermeCalixto | Funcionário | 40 |  |
| Renan Figueiras | Funcionário | 60 |  |
| Filipe Barbosa | Funcionário | 100 | 10 |
| Vinicius Vieira | Funcionário | 75 |  |
| Henrique Pereira | Funcionário | 60 |  |
| Professor Hilmer | Cliente |  |  |

## Schedule

| ID | WBS | Task | Duration | Start | Finish | Predecessors | Total slack | Free slack | Constraint | Resources | Work | Cost |
| --- | --- | --- | --- | --- | --- | --- | --- | --- | --- | --- | --- | --- |
| 1 | 1 | **DotProjectEAP** | 86d | 2011-08-22 | 2011-12-19 |  |  |  |  |  | 2592h | 177,290 |
| 2 | 1.1 | **Iniciação 1** | 16d | 2011-08-22 | 2011-09-12 |  |  |  |  |  | 928h | 62,210 |
| 3 | 1 | **Gerenciamento do Projeto** | 1d? | 2011-08-22 | 2011-08-22 |  |  |  |  |  | 704h | 47,120 |
| 4 | 1.1.1.1 | Estudo inicial | 4d | 2011-08-22 | 2011-08-25 |  | -13d | 0d |  | Filipe Barbosa; Guilherme Fay; GuilhermeCalixto; Henrique Pereira; Jose Guimarães; Rafael Queiroz; Renan Figueiras; Vinicius Vieira | 256h | 17,130 |
| 5 | 1.1.1.2 | Primeira Reunião | 1d? | 2011-08-22 | 2011-08-22 |  | -10d | 0d |  | Filipe Barbosa; Guilherme Fay; GuilhermeCalixto; Henrique Pereira; Jose Guimarães; Rafael Queiroz; Renan Figueiras; Vinicius Vieira | 64h | 4,290 |
| 6 | 1.2 | Definir Escopo | 2d | 2011-08-26 | 2011-08-29 | 4, 5 | -13d | 0d |  | Filipe Barbosa; Guilherme Fay; GuilhermeCalixto; Henrique Pereira; Jose Guimarães; Rafael Queiroz; Renan Figueiras; Vinicius Vieira | 128h | 8,570 |
| 7 | 1.1.1.4 | Elaborar Termo de Abertura basico | 4d | 2011-08-30 | 2011-09-02 | 6 | -13d | 0d |  | Filipe Barbosa; Guilherme Fay; GuilhermeCalixto; Henrique Pereira; Jose Guimarães; Rafael Queiroz; Renan Figueiras; Vinicius Vieira | 256h | 17,130 |
| 8 | 2 | **Modelagem de Negócios** | 1d? | 2011-08-22 | 2011-08-22 |  |  |  |  |  | 144h | 9,730 |
| 9 | 2.5 | Definir Papeis e Responsabilidades | 1d | 2011-09-05 | 2011-09-05 | 7 | -10d | 0d |  | Filipe Barbosa; Guilherme Fay; GuilhermeCalixto; Henrique Pereira; Jose Guimarães; Rafael Queiroz; Renan Figueiras; Vinicius Vieira | 64h | 4,290 |
| 10 | 1.1.2.2 | Elaborar EAP | 2d | 2011-09-05 | 2011-09-06 | 7 | -13d | 0d |  | Guilherme Fay; Jose Guimarães; Renan Figueiras | 48h | 3,200 |
| 11 | 1.1.2.3 | Elaborar cronograma Inicial | 2d | 2011-09-07 | 2011-09-08 | 10 | -13d | 0d |  | Guilherme Fay; Jose Guimarães | 32h | 2,240 |
| 12 | 3 | **Requisitos** | 1d | 2011-08-22 | 2011-08-22 |  |  |  |  |  | 48h | 3,120 |
| 13 | 3.1 | Analizar o Problema | 1d | 2011-08-30 | 2011-08-30 | 6 | 79d |  | start no earlier than 1999-05-04 | Henrique Pereira; Rafael Queiroz; Vinicius Vieira | 24h | 1,560 |
| 14 | 3.2 | Compreender as necessidades dos envolvidos | 1d | 2011-08-30 | 2011-08-30 | 6 | 79d |  | start no earlier than 1999-05-04 | Henrique Pereira; Rafael Queiroz; Vinicius Vieira | 24h | 1,560 |
| 15 | 7 | **Configuração & Mudança** | 1d | 2011-08-22 | 2011-08-22 |  |  |  |  |  | 32h | 2,240 |
| 16 | 7.1 | Definir Gerência de configuração | 2d | 2011-08-30 | 2011-08-31 | 6 | -7d | 0d |  | Guilherme Fay; Jose Guimarães | 32h | 2,240 |
| 17 | 1.2 | **Iniciação 2** | 16d | 2011-09-12 | 2011-10-03 |  |  |  |  |  | 512h | 35,210 |
| 18 | 1 | **Gerenciamento do Projeto** | 1d? | 2011-09-12 | 2011-09-12 |  |  |  |  |  | 320h | 21,830 |
| 19 | 1.1 | Segunda Reunião | 1d? | 2011-09-12 | 2011-09-12 |  | 0d |  |  | Filipe Barbosa; Guilherme Fay; GuilhermeCalixto; Henrique Pereira; Jose Guimarães; Rafael Queiroz; Renan Figueiras; Vinicius Vieira | 64h | 4,290 |
| 20 | 1.2.1.2 | Refinar Termo de Abertura basico | 2d | 2011-09-12 | 2011-09-13 | 6 | -3d | 0d |  | Filipe Barbosa; Guilherme Fay; GuilhermeCalixto; Henrique Pereira; Jose Guimarães; Rafael Queiroz; Renan Figueiras; Vinicius Vieira | 128h | 8,570 |
| 21 | 1.2.1.3 | Levantamento de Riscos | 2d | 2011-09-14 | 2011-09-15 | 20 | -3d | 0d |  | Henrique Pereira; Rafael Queiroz | 32h | 1,920 |
| 22 | 1.2.1.4 | Levantar Orçamento inicial | 2d | 2011-09-14 | 2011-09-15 | 20 | -3d | 0d |  | Filipe Barbosa; Guilherme Fay; Jose Guimarães | 48h | 3,850 |
| 23 | 1.2.1.5 | Definir Artefatos | 2d | 2011-09-14 | 2011-09-15 | 20 | -3d | 0d |  | Renan Figueiras | 16h | 960 |
| 24 | 1.2.1.6 | Levantar Ferramentas | 2d | 2011-09-14 | 2011-09-15 | 20 | -3d | 0d |  | Guilherme Fay; Jose Guimarães | 32h | 2,240 |

| ID | WBS | Task | Type | Duration | Start | Finish | Predecessors | Total slack | Free slack | Constraint | Resources | Work | Cost |
| --- | --- | --- | --- | --- | --- | --- | --- | --- | --- | --- | --- | --- | --- |
| 25 | 3 | **Requisitos** |  | 1d? | 2011-09-12 | 2011-09-12 |  |  |  |  |  | 128h | 8,570 |
| 26 | 3.1 | Levantar Funcionalidades do Sistema (Requisitos iniciais) |  | 2d | 2011-09-14 | 2011-09-15 | 20 | -1d | 0d | start no earlier than 1999-05-04 | Filipe Barbosa; Guilherme Fay; GuilhermeCalixto; Henrique Pereira; Jose Guimarães; Rafael Queiroz; Renan Figueiras; Vinicius Vieira | 128h | 8,570 |
| 27 | 1.2.3 | **Analise e Design** |  | 5d? | 2011-09-12 | 2011-09-16 |  |  |  |  |  | 32h | 2,570 |
| 28 | 1.2.3.1 | Definir Arquitetura |  | 2d | 2011-09-16 | 2011-09-19 | 26 | -1d | 0d |  | Filipe Barbosa; Rafael Queiroz | 32h | 2,570 |
| 29 | 7 | **Configuração & Mudança** |  | 1d? | 2011-09-12 | 2011-09-12 |  |  |  |  |  | 32h | 2,240 |
| 30 | 7.1 | Criar Ambiente de Configuração de Versões |  | 2d | 2011-09-12 | 2011-09-13 |  | -1d | 0d |  | Guilherme Fay; Jose Guimarães | 32h | 2,240 |
| 31 | 1.3 | **Elaboração 1** |  | 11d | 2011-10-03 | 2011-10-17 |  |  |  |  |  | 488h | 32,830 |
| 32 | 1.3.1 | **Gerenciamento do Projeto** |  | 1d | 2011-10-03 | 2011-10-03 |  |  |  |  |  | 192h | 12,860 |
| 33 | 1.3.1.1 | Terceira Reunião |  | 1d | 2011-10-03 | 2011-10-03 |  | 0d |  |  | Filipe Barbosa; Guilherme Fay; GuilhermeCalixto; Henrique Pereira; Jose Guimarães; Rafael Queiroz; Renan Figueiras; Vinicius Vieira | 64h | 4,290 |
| 34 | 1.3.1.2 | Reavaliar escopo e risco do projeto |  | 2d | 2011-10-03 | 2011-10-04 | 20, 21 | -1d | 0d |  | Filipe Barbosa; Guilherme Fay; GuilhermeCalixto; Henrique Pereira; Jose Guimarães; Rafael Queiroz; Renan Figueiras; Vinicius Vieira | 128h | 8,570 |
| 35 | 1.3.2 | **Requisitos** |  | 1d? | 2011-10-03 | 2011-10-03 |  |  |  |  |  | 88h | 5,800 |
| 36 | 3.1 | Levantar Requisitos (Funcionais) |  | 2d | 2011-09-14 | 2011-09-15 | 20 | 11d |  | start no earlier than 1999-05-04 | Rafael Queiroz; Vinicius Vieira | 32h | 2,160 |
| 37 | 3.1 | Levantar Requisitos (Nao Funcionais) |  | 2d | 2011-09-14 | 2011-09-15 | 20 | 67d |  | start no earlier than 1999-05-04 | Henrique Pereira | 16h | 960 |
| 38 | 1.3.2.3 | Elaborar diagrama de Casos de uso inicial |  | 1d? | 2011-10-03 | 2011-10-03 | 36 | 0d |  |  | Henrique Pereira; Rafael Queiroz; Vinicius Vieira | 24h | 1,560 |
| 39 | 1.3.2.4 | Elaborar documento visão |  | 1d? | 2011-10-03 | 2011-10-03 |  | 0d |  |  | Guilherme Fay; Jose Guimarães | 16h | 1,120 |
| 40 | 1.3.3 | **Analise e Design** |  | 5d? | 2011-10-03 | 2011-10-07 |  |  |  |  |  | 128h | 8,570 |
| 41 | 1.3.3.1 | Refinar Arquitetura |  | 2d | 2011-10-03 | 2011-10-04 |  | 3d |  |  | Filipe Barbosa; Guilherme Fay; GuilhermeCalixto; Henrique Pereira; Jose Guimarães; Rafael Queiroz; Renan Figueiras; Vinicius Vieira | 128h | 8,570 |
| 42 | 1.3.4 | **Configuração & Mudança** |  | 1d? | 2011-10-03 | 2011-10-03 |  |  |  |  |  | 80h | 5,600 |
| 43 | 1.3.4.1 | Alterar e liberar itens de configuração |  | 1d | 2011-10-03 | 2011-10-03 |  | 0d |  |  | Guilherme Fay; Jose Guimarães | 16h | 1,120 |
| 44 | 1.3.4.2 | Definir Criação de Branch e Merge |  | 2d | 2011-10-03 | 2011-10-04 |  | -1d | 0d |  | Guilherme Fay; Jose Guimarães | 32h | 2,240 |
| 45 | 1.3.4.3 | Criar uma Tag 1.0 com os itens Originais do DotProject - Baseline |  | 1d | 2011-10-03 | 2011-10-03 |  | 0d |  |  | Guilherme Fay; Jose Guimarães | 16h | 1,120 |
| 46 | 1.3.4.4 | Monitorar Status de configuração |  | 1d | 2011-10-03 | 2011-10-03 |  | 0d |  |  | Guilherme Fay; Jose Guimarães | 16h | 1,120 |
| 47 | 1.4 | **Elaboração 2** |  | 6d | 2011-10-17 | 2011-10-24 |  |  |  |  |  | 416h | 28,890 |
| 48 | 1.4.1 | **Gerenciamento do Projeto** |  | 1d? | 2011-10-17 | 2011-10-17 |  |  |  |  |  | 64h | 4,300 |
| 49 | 1.4.1.1 | Quarta reunião |  | 1d | 2011-10-17 | 2011-10-17 |  | 0d |  |  | Filipe Barbosa; Guilherme Fay; GuilhermeCalixto; Henrique Pereira; Jose Guimarães; Rafael Queiroz; Renan Figueiras; Vinicius Vieira | 64h | 4,290 |
| 50 | 1.4.1.2 | Entregar termo de Abertura Basico | milestone, manual | 0d | 2011-10-24 | 2011-10-24 |  |  |  |  | Filipe Barbosa; Guilherme Fay; GuilhermeCalixto; Henrique Pereira; Jose Guimarães; Rafael Queiroz; Renan Figueiras; Vinicius Vieira |  | 10 |

| ID | WBS | Task | Type | Duration | Start | Finish | Predecessors | Total slack | Free slack | Constraint | Resources | Work | Cost |
| --- | --- | --- | --- | --- | --- | --- | --- | --- | --- | --- | --- | --- | --- |
| 51 | 1.4.2 | **Requisitos** |  | 1d? | 2011-10-17 | 2011-10-17 |  |  |  |  |  | 192h | 12,880 |
| 52 | 3.1 | Refinar Requisitos (Funcionais) |  | 1d | 2011-09-05 | 2011-09-05 | 7 | 29d |  | start no earlier than 1999-05-04 | Filipe Barbosa; Guilherme Fay; GuilhermeCalixto; Henrique Pereira; Jose Guimarães; Rafael Queiroz; Renan Figueiras; Vinicius Vieira | 64h | 4,290 |
| 53 | 3.1 | Refinar Requisitos (Nao Funcionais) |  | 1d | 2011-09-05 | 2011-09-05 | 7 | 31d |  | start no earlier than 1999-05-04 | Filipe Barbosa; Guilherme Fay; GuilhermeCalixto; Henrique Pereira; Jose Guimarães; Rafael Queiroz; Renan Figueiras; Vinicius Vieira | 64h | 4,290 |
| 54 | 1.4.2.3 | Refinar diagrama de Casos de uso inicial |  | 1d? | 2011-10-17 | 2011-10-17 | 52 | 0d |  |  | Filipe Barbosa; Guilherme Fay; GuilhermeCalixto; Henrique Pereira; Jose Guimarães; Rafael Queiroz; Renan Figueiras; Vinicius Vieira | 64h | 4,290 |
| 55 | 1.4.2.4 | Entregar documento visão | milestone, manual | 0d | 2011-10-19 | 2011-10-19 | 52, 53 |  |  |  | Filipe Barbosa; Guilherme Fay; GuilhermeCalixto; Henrique Pereira; Jose Guimarães; Rafael Queiroz; Renan Figueiras; Vinicius Vieira |  | 10 |
| 56 | 1.4.3 | **Analise e Design** |  | 1d? | 2011-10-17 | 2011-10-17 |  |  |  |  |  |  | 10 |
| 57 | 1.4.3.1 | Entregar documento de Arquitetura | milestone, manual | 0d | 2011-10-17 | 2011-10-17 |  |  |  |  | Filipe Barbosa; Guilherme Fay; GuilhermeCalixto; Henrique Pereira; Jose Guimarães; Rafael Queiroz; Renan Figueiras; Vinicius Vieira |  | 10 |
| 58 | 1.4.4 | **Implementação** |  | 1d? | 2011-10-17 | 2011-10-17 |  |  |  |  |  | 64h | 5,140 |
| 59 | 1.4.4.1 | Implementar componentes (Módulo EAP) |  | 4d | 2011-10-19 | 2011-10-24 | 55 | -5d | 0d |  | Filipe Barbosa; Rafael Queiroz | 64h | 5,130 |
| 60 | 1.4.4.2 | Entrega da Build 1.1 | milestone, manual | 0d | 2011-10-24 | 2011-10-24 |  |  |  | start no earlier than 2011-10-24 | Filipe Barbosa; Guilherme Fay; GuilhermeCalixto; Henrique Pereira; Jose Guimarães; Rafael Queiroz; Renan Figueiras; Vinicius Vieira |  | 10 |
| 61 | 1.4.5 | **Teste** |  | 1d? | 2011-10-17 | 2011-10-17 |  |  |  |  |  | 48h | 3,200 |
| 62 | 1.4.5.1 | Criar plano de teste Build 1.1 |  | 2d | 2011-10-17 | 2011-10-18 |  | -1d | 0d |  | Guilherme Fay; Jose Guimarães; Rafael Queiroz | 48h | 3,200 |
| 63 | 1.4.6 | **Configuração & Mudança** |  | 1d | 2011-10-17 | 2011-10-17 |  |  |  |  |  | 48h | 3,360 |
| 64 | 1.4.6.1 | Criar um Branch 1.1.1 Para paralelizar a implementação e testes |  | 1d | 2011-10-24 | 2011-10-24 | 60 | -5d | 0d |  | Guilherme Fay; Jose Guimarães | 16h | 1,120 |
| 65 | 1.4.6.2 | Criar uma Tag com os itens de configuração referentes a build 1.1 |  | 1d | 2011-10-24 | 2011-10-24 | 60 | -5d | 0d |  | Guilherme Fay; Jose Guimarães | 16h | 1,120 |
| 66 | 1.4.6.3 | Monitorar Status de configuração |  | 1d | 2011-10-17 | 2011-10-17 |  | 0d |  |  | Guilherme Fay; Jose Guimarães | 16h | 1,120 |
| 67 | 1.5 | **Construção 1** |  | 11d | 2011-10-24 | 2011-11-07 |  |  |  |  |  | 248h | 18,150 |
| 68 | 1.5.1 | **Gerenciamento do Projeto** |  | 1d? | 2011-10-24 | 2011-10-24 |  |  |  |  |  | 72h | 5,010 |
| 69 | 1.5.1.1 | Quinta reunião |  | 1d | 2011-10-24 | 2011-10-24 |  | 0d |  |  | Filipe Barbosa; Guilherme Fay; GuilhermeCalixto; Henrique Pereira; Jose Guimarães; Rafael Queiroz; Renan Figueiras; Vinicius Vieira | 64h | 4,290 |
| 70 | 1.5.1.2 | Gerar relatório de retrospectiva |  | 1d? | 2011-10-25 | 2011-10-25 | 47 | -1d | 0d |  | Jose Guimarães | 8h | 720 |
| 71 | 1.5.1.3 | Feedback do cliente |  | 1d? | 2011-10-24 | 2011-10-24 |  | 0d |  |  |  |  |  |
| 72 | 1.5.2 | **Requisitos** |  | 1d | 2011-10-24 | 2011-10-24 |  |  |  |  |  |  |  |
| 73 | 1.5.2.1 | Gerenciar requisitos Variaveis |  | 1d | 2011-10-24 | 2011-10-24 |  | 0d |  |  |  |  |  |
| 74 | 1.5.3 | **Implementação** |  | 1d? | 2011-10-24 | 2011-10-24 |  |  |  |  |  | 80h | 6,420 |
| 75 | 1.5.3.1 | Implementar componentes (integrar modulo EAP com o modulo do projeto) |  | 5d | 2011-10-24 | 2011-10-28 | 55 | -4d | 0d |  | Filipe Barbosa; Rafael Queiroz | 80h | 6,410 |
| 76 | 1.5.3.2 | Entrega da Build 1.2 | milestone, manual | 0d | 2011-11-07 | 2011-11-07 |  |  |  |  | Filipe Barbosa; Guilherme Fay; GuilhermeCalixto; Henrique Pereira; Jose Guimarães; Rafael Queiroz; Renan Figueiras; Vinicius Vieira |  | 10 |

| ID | WBS | Task | Type | Duration | Start | Finish | Predecessors | Total slack | Free slack | Resources | Work | Cost |
| --- | --- | --- | --- | --- | --- | --- | --- | --- | --- | --- | --- | --- |
| 77 | 1.5.4 | **Teste** |  | 1d? | 2011-10-24 | 2011-10-24 |  |  |  |  | 80h | 5,600 |
| 78 | 1.5.4.1 | Criar plano de teste Build 1.2 |  | 1d | 2011-10-24 | 2011-10-24 |  | 0d |  | Guilherme Fay; Jose Guimarães | 16h | 1,120 |
| 79 | 1.5.4.2 | Testar Build 1.1 |  | 2d | 2011-10-24 | 2011-10-25 | 60 | -2d | 0d | Guilherme Fay; Jose Guimarães | 32h | 2,240 |
| 80 | 1.5.4.3 | Gerar relatório de Testes build 1.1 |  | 1d? | 2011-10-26 | 2011-10-26 | 79 | -2d | 0d | Guilherme Fay; Jose Guimarães | 16h | 1,120 |
| 81 | 1.5.4.4 | Correção dos "bugs" build 1.1 |  | 1d? | 2011-10-26 | 2011-10-26 | 79 | -2d | 0d | Guilherme Fay; Jose Guimarães | 16h | 1,120 |
| 82 | 1.5.5 | **Configuração & Mudança** |  | 1d | 2011-10-24 | 2011-10-24 |  |  |  |  | 16h | 1,120 |
| 83 | 1.5.5.1 | Criar um Branch 1.2.1 Para paralelizar a implementação e testes |  | 1d | 2011-11-07 | 2011-11-07 | 76 | -10d | 0d |  |  |  |
| 84 | 1.5.5.2 | Criar uma Tag com os itens de configuração referentes a build 1.2 |  | 1d | 2011-11-07 | 2011-11-07 | 76 | -10d | 0d |  |  |  |
| 85 | 1.5.5.3 | Monitorar Status de configuração |  | 1d | 2011-10-24 | 2011-10-24 |  | 0d |  | Guilherme Fay; Jose Guimarães | 16h | 1,120 |
| 86 | 1.6 | **Construção 2** |  | 11d | 2011-11-07 | 2011-11-21 |  |  |  |  |  |  |
| 87 | 1.6.1 | **Gerenciamento do Projeto** |  | 1d? | 2011-11-07 | 2011-11-07 |  |  |  |  |  |  |
| 88 | 1.6.1.1 | Sexta reunião |  | 1d | 2011-11-07 | 2011-11-07 |  | 0d |  |  |  |  |
| 89 | 1.6.1.2 | Gerar relatório de retrospectiva |  | 1d? | 2011-11-08 | 2011-11-08 | 67 | -1d | 0d |  |  |  |
| 90 | 1.6.1.3 | Feedback do cliente |  | 1d? | 2011-11-07 | 2011-11-07 |  | 0d |  |  |  |  |
| 91 | 1.6.2 | **Requisitos** |  | 1d | 2011-11-07 | 2011-11-07 |  |  |  |  |  |  |
| 92 | 1.6.2.1 | Gerenciar requisitos Variaveis |  | 1d | 2011-11-07 | 2011-11-07 |  | 0d |  |  |  |  |
| 93 | 1.6.3 | **Implementação** |  | 1d? | 2011-11-07 | 2011-11-07 |  |  |  |  |  |  |
| 94 | 1.6.3.1 | Implementar componentes (Definir modulo EAP com modulo do projeto) |  | 6d | 2011-11-07 | 2011-11-14 | 55 | -5d | 0d |  |  |  |
| 95 | 1.6.3.2 | Entrega da Build 1.3 | milestone, manual | 0d | 2011-11-21 | 2011-11-21 |  |  |  |  |  |  |
| 96 | 1.6.4 | **Teste** |  | 1d? | 2011-11-07 | 2011-11-07 |  |  |  |  |  |  |
| 97 | 1.6.4.1 | Criar plano de teste Build 1.3 |  | 1d | 2011-11-07 | 2011-11-07 |  | 0d |  |  |  |  |
| 98 | 1.6.4.2 | Testar Build 1.2 |  | 4d | 2011-11-07 | 2011-11-10 | 76 | -5d | 0d |  |  |  |
| 99 | 1.6.4.3 | Gerar relatório de Testes Build 1.2 |  | 1d? | 2011-11-11 | 2011-11-11 | 98 | -4d | 0d |  |  |  |
| 100 | 1.6.4.4 | Correção dos "bugs" Build 1.2 |  | 2d | 2011-11-11 | 2011-11-14 | 98 | -5d | 0d |  |  |  |

| ID | WBS | Task | Type | Duration | Start | Finish | Predecessors | Total slack | Free slack | Constraint |
| --- | --- | --- | --- | --- | --- | --- | --- | --- | --- | --- |
| 101 | 1.6.5 | **Configuração & Mudança** |  | 1d | 2011-11-07 | 2011-11-07 |  |  |  |  |
| 102 | 1.6.5.1 | Criar um Branch 1.3.1 Para paralelizar a implementação e testes |  | 1d | 2011-11-21 | 2011-11-21 | 95 | -10d | 0d |  |
| 103 | 1.6.5.2 | Criar uma Tag com os itens de configuração referentes a build 1.3 |  | 1d | 2011-11-21 | 2011-11-21 | 95 | -10d | 0d |  |
| 104 | 1.6.5.3 | Monitorar Status de configuração |  | 1d | 2011-11-07 | 2011-11-07 |  | 0d |  |  |
| 105 | 1.7 | **Construção 3** |  | 11d | 2011-11-21 | 2011-12-05 |  |  |  |  |
| 106 | 1.7.1 | **Gerenciamento do Projeto** |  | 1d | 2011-11-21 | 2011-11-21 |  |  |  |  |
| 107 | 1.7.1.1 | Sétima Reunião |  | 1d | 2011-11-21 | 2011-11-21 |  | 0d |  |  |
| 108 | 1.7.1.2 | Gerar relatório de retrospectiva |  | 1d? | 2011-11-22 | 2011-11-22 | 86 | -1d | 0d |  |
| 109 | 1.7.1.3 | Feedback do cliente |  | 1d? | 2011-11-21 | 2011-11-21 |  | 0d |  |  |
| 110 | 1.7.2 | **Requisitos** |  | 1d | 2011-11-21 | 2011-11-21 |  |  |  |  |
| 111 | 1.7.2.1 | Gerenciar requisitos Variaveis |  | 1d | 2011-11-21 | 2011-11-21 |  | 0d |  |  |
| 112 | 1.7.3 | **Implementação** |  | 1d? | 2011-11-21 | 2011-11-21 |  |  |  |  |
| 113 | 1.7.3.1 | Implementar componentes (Acoplamento das builds) |  | 7d | 2011-11-21 | 2011-11-29 | 55 | -6d | 0d |  |
| 114 | 1.7.3.2 | Entrega da Build 1.4 | milestone, manual | 0d | 2011-12-05 | 2011-12-05 |  |  |  |  |
| 115 | 1.7.4 | **Teste** |  | 1d? | 2011-11-21 | 2011-11-21 |  |  |  |  |
| 116 | 1.7.4.1 | Criar plano de teste Build 1.4 |  | 1d | 2011-11-21 | 2011-11-21 |  | 0d |  |  |
| 117 | 1.7.4.2 | Testar Build 1.3 |  | 4d | 2011-11-21 | 2011-11-24 | 95 | -5d | 0d |  |
| 118 | 1.7.4.3 | Gerar relatório de Testes Build 1.3 |  | 1d? | 2011-11-25 | 2011-11-25 | 117 | -4d | 0d |  |
| 119 | 1.7.4.4 | Correção dos "bugs" Build 1.3 |  | 2d | 2011-11-25 | 2011-11-28 | 117 | -5d | 0d |  |
| 120 | 1.7.5 | **Configuração & Mudança** |  | 1d | 2011-11-21 | 2011-11-21 |  |  |  |  |
| 121 | 1.7.5.1 | Criar um Branch 1.4.1 Para paralelizar a implementação e testes |  | 1d | 2011-12-05 | 2011-12-05 | 114 | -10d | 0d |  |
| 122 | 1.7.5.2 | Criar uma Tag com os itens de configuração referentes a build 1.4 |  | 1d | 2011-12-05 | 2011-12-05 | 114 | -10d | 0d |  |
| 123 | 1.7.5.3 | Monitorar Status de configuração |  | 1d | 2011-11-21 | 2011-11-21 |  | 0d |  |  |
| 124 | 1.8 | **Transição** |  | 11d | 2011-12-05 | 2011-12-19 |  |  |  |  |
| 125 | 1.8.1 | **Gerenciamento do Projeto** |  | 1d? | 2011-12-05 | 2011-12-05 |  |  |  |  |
| 126 | 1.8.1.1 | Oitava Reunião |  | 1d | 2011-12-05 | 2011-12-05 |  | 10d |  | start no earlier than 2011-12-05 |
| 127 | 1.8.1.2 | Gerar relatório de retrospectiva |  | 1d? | 2011-12-06 | 2011-12-06 | 105 | -1d | 0d |  |
| 128 | 1.8.1.3 | Feedback do cliente |  | 1d? | 2011-12-05 | 2011-12-05 |  | 0d |  |  |
| 129 | 1.8.1.4 | Finalizar Projeto | milestone, manual | 0d | 2011-12-06 | 2011-12-06 | 131 |  |  |  |

| ID | WBS | Task | Type | Duration | Start | Finish | Predecessors | Total slack | Free slack |
| --- | --- | --- | --- | --- | --- | --- | --- | --- | --- |
| 130 | 1.8.2 | **Implementação** |  | 1d | 2011-12-05 | 2011-12-05 |  |  |  |
| 131 | 1.8.2.1 | Entrega da Release | milestone, manual | 0d | 2011-12-06 | 2011-12-06 | 136 |  |  |
| 132 | 1.8.3 | **Teste** |  | 1d | 2011-12-05 | 2011-12-05 |  |  |  |
| 133 | 1.8.3.1 | Testar Build 1.4 |  | 4d | 2011-12-05 | 2011-12-08 | 114 | -4d | 0d |
| 134 | 1.8.3.2 | Gerar relatório de Testes Build 1.4 |  | 1d? | 2011-12-09 | 2011-12-09 | 133 | -4d | 0d |
| 135 | 1.8.3.3 | Correção dos "bugs" Build 1.4 |  | 1d? | 2011-12-09 | 2011-12-09 | 133 | -4d | 0d |
| 136 | 1.8.3.4 | Validar Release |  | 1d | 2011-12-05 | 2011-12-05 |  | 0d |  |
| 137 | 1.8.4 | **Configuração & Mudança** |  | 1d | 2011-12-05 | 2011-12-05 |  |  |  |
| 138 | 1.8.4.1 | Alterar e liberar itens de configuração |  | 1d | 2011-12-05 | 2011-12-05 |  | 0d |  |
| 139 | 1.8.4.2 | Criar uma Tag com os ultimos itens de configuração para Release |  | 1d | 2011-12-06 | 2011-12-06 | 131 | -1d | 0d |
